# Tailspin Remote Drone 2

Schedule from MS Project, 2019-01-07 to 2019-03-11.

## Calendars

- Standard: Mon-Fri 08:00-12:00, 13:00-17:00; Sat-Sun off. Exceptions (off unless hours are given): 2019-01-21 to 2021-01-18 (Martin Luther King Jr. Day , recurring).

## Resources

| Resource | Unit | Rate | Notes |
| --- | --- | --- | --- |
| Jamie Reding |  | 37.5 | Jamie on vacation Jan 14 and 15; available for consult at home if necessary |
| Scott Seely |  | 22.5 |  |
| Jeff Pike |  | 25 |  |
| Judy Lew |  | 29.5 |  |
| Brenda Diaz |  | 19.75 |  |
| Brad Sutton |  | 16.5 |  |
| Annette Hill |  | 20 |  |
| Ryan Ihrig |  | 16 |  |
| Yan Li |  | 28.5 |  |
| Model technician |  | 16.5 |  |
| Digital camera |  | 7.5 |  |
| Anemometer |  | 0.5 |  |
| Safety tether |  | 0.12 |  |
| Clipboards |  |  |  |
| Large Conference Room |  |  |  |
| Small Conference Room |  |  |  |
| SD Card | 4 GB | 12 |  |
| Printer paper | Ream | 4 |  |
| Travel |  |  |  |
| Food |  |  |  |

## Schedule

| ID | WBS | Task | Type | Duration | Start | Finish | Predecessors | Total slack |
| --- | --- | --- | --- | --- | --- | --- | --- | --- |
| 1 | 1 | **Target Market Research and Analysis** |  | 29.75d | 2019-01-07 | 2019-02-18 |  | 0d |
| 2 | 1.1 | **Research** |  | 20.75d | 2019-01-07 | 2019-02-05 |  | 0d |
| 3 | 1.1.1 | Research begins | milestone | 0d | 2019-01-07 | 2019-01-07 |  | 0d |
| 4 | 1.1.2 | **Surveys** |  | 8.12d | 2019-01-07 | 2019-01-17 |  | 0d |
| 5 | 1.1.2.1 | Develop survey questionnaire |  | 3d | 2019-01-07 | 2019-01-09 | 3 | 0d |
| 6 | 1.1.2.2 | Review and approval of survey |  | 1h | 2019-01-10 | 2019-01-10 | 5 | 0d |
| 7 | 1.1.2.3 | Conduct survey |  | 1w | 2019-01-10 | 2019-01-17 | 6 | 36.62d |
| 8 | 1.1.3 | **Focus Groups** |  | 12d | 2019-01-10 | 2019-01-29 |  | 0d |
| 9 | 1.1.3.1 | Identify focus group member demographics |  | 2d | 2019-01-10 | 2019-01-14 | 6 | 0d |
| 10 | 1.1.3.2 | Contact potential focus group members |  | 5d | 2019-01-14 | 2019-01-22 | 9 | 0d |
| 11 | 1.1.3.3 | Conduct focus groups |  | 1w | 2019-01-22 | 2019-01-29 | 10 | 0d |
| 12 | 1.1.4 | **Observations** |  | 5.62d | 2019-01-29 | 2019-02-05 |  | 0d |
| 13 | 1.1.4.1 | Identify observation parameters |  | 4h | 2019-01-29 | 2019-01-29 | 11 | 0d |
| 14 | 1.1.4.2 | Select observation locations |  | 1h | 2019-01-29 | 2019-01-29 | 13 | 0d |
| 15 | 1.1.4.3 | Conduct observations |  | 1w | 2019-01-29 | 2019-02-05 | 14 | 0d |
| 16 | 1.1.5 | Research complete | milestone | 0d | 2019-02-05 | 2019-02-05 | 15 | 24d |
| 17 | 1.2 | **Analysis** |  | 14d | 2019-01-29 | 2019-02-18 |  | 0d |
| 18 | 1.2.1 | Analysis begins | milestone | 0d | 2019-01-29 | 2019-01-29 | 15SS | 0d |
| 19 | 1.2.2 | **Analysis of Research Data** |  | 8d | 2019-01-29 | 2019-02-08 |  | 0d |
| 20 | 1.2.2.1 | Analyze surveys, focus groups, and observations |  | 2d | 2019-01-29 | 2019-01-31 | 18 | 0d |
| 21 | 1.2.2.2 | Create follow up actions for secondary research |  | 1d | 2019-01-31 | 2019-02-01 | 20 | 0d |
| 22 | 1.2.2.3 | Conduct secondary research |  | 1w | 2019-02-01 | 2019-02-08 | 21 | 0d |
| 23 | 1.2.3 | **Report of Research Findings** |  | 7d | 2019-02-07 | 2019-02-18 |  | 0d |
| 24 | 1.2.3.1 | Compile draft copy of report |  | 8h | 2019-02-07 | 2019-02-08 | 22FF | 0d |
| 25 | 1.2.3.2 | Draft copy review period |  | 5d | 2019-02-08 | 2019-02-15 | 24 | 0d |
| 26 | 1.2.3.3 | Review comments and compile final report |  | 1d | 2019-02-15 | 2019-02-18 | 25 | 0d |
| 27 | 1.2.4 | Analysis complete | milestone | 0d | 2019-02-18 | 2019-02-18 | 26 | 0d |

Notes:
- 7: Contact Mark Hanson in Marketing for additional resource support.

| ID | WBS | Task | Type | Duration | Start | Finish | Predecessors | Total slack |
| --- | --- | --- | --- | --- | --- | --- | --- | --- |
| 28 | 2 | **Design** |  | 4d? | 2019-02-18 | 2019-02-22 |  | 0d |
| 29 | 2.1 | Design begins | milestone | 0d | 2019-02-18 | 2019-02-18 | 27 | 0d |
| 30 | 2.2 | Research Findings Evaluation |  | 1d? | 2019-02-18 | 2019-02-19 | 29 | 0d |
| 31 | 2.3 | Design Document |  | 1d? | 2019-02-19 | 2019-02-20 | 30 | 0d |
| 32 | 2.4 | Proof of Concept |  | 1d? | 2019-02-20 | 2019-02-21 | 31 | 0d |
| 33 | 2.5 | Final Design Selection |  | 1d? | 2019-02-21 | 2019-02-22 | 32 | 0d |
| 34 | 2.6 | Design complete | milestone | 0d | 2019-02-22 | 2019-02-22 | 33 | 0d |
| 35 | 3 | **Product Development** |  | 4d? | 2019-02-22 | 2019-02-28 |  | 0d |
| 36 | 3.1 | Product development begins | milestone | 0d | 2019-02-22 | 2019-02-22 | 34 | 0d |
| 37 | 3.2 | Initial Prototype |  | 1d? | 2019-02-22 | 2019-02-25 | 36 | 0d |
| 38 | 3.3 | Internal Testing |  | 1d? | 2019-02-25 | 2019-02-26 | 37 | 0d |
| 39 | 3.4 | Raw Materials List |  | 1d? | 2019-02-26 | 2019-02-27 | 38 | 0d |
| 40 | 3.5 | Parts Designation |  | 1d? | 2019-02-27 | 2019-02-28 | 39 | 0d |
| 41 | 3.6 | Product development complete | milestone | 0d | 2019-02-28 | 2019-02-28 | 40 | 0d |
| 42 | 4 | **Production Planning** |  | 4d? | 2019-02-28 | 2019-03-06 |  | 0d |
| 43 | 4.1 | Production planning begins | milestone | 0d | 2019-02-28 | 2019-02-28 | 41 | 0d |
| 44 | 4.2 | High-level Production Plan |  | 1d? | 2019-02-28 | 2019-03-01 | 43 | 0d |
| 45 | 4.3 | Resource Planning |  | 1d? | 2019-03-01 | 2019-03-04 | 44 | 0d |
| 46 | 4.4 | Quality Control Design |  | 1d? | 2019-03-04 | 2019-03-05 | 45 | 0d |
| 47 | 4.5 | Final Production Plan Approval |  | 1d? | 2019-03-05 | 2019-03-06 | 46 | 0d |
| 48 | 4.6 | Production planning complete | milestone | 0d | 2019-03-06 | 2019-03-06 | 47 | 0d |
| 49 | 5 | **Marketing** |  | 3d? | 2019-03-06 | 2019-03-11 |  | 0d |
| 50 | 5.1 | Marketing phase begins | milestone | 0d | 2019-03-06 | 2019-03-06 | 48 | 0d |
| 51 | 5.2 | Marketing Strategy Development |  | 1d? | 2019-03-06 | 2019-03-07 | 50 | 0d |
| 52 | 5.3 | Marketing Plan Development and Approval |  | 1d? | 2019-03-07 | 2019-03-08 | 51 | 0d |
| 53 | 5.4 | Marketing Materials |  | 1d? | 2019-03-08 | 2019-03-11 | 52 | 0d |
| 54 | 5.5 | Marketing phase complete | milestone | 0d | 2019-03-11 | 2019-03-11 | 53 | 0d |
| 55 | 6 | Project Management |  | 1d? | 2019-01-07 | 2019-01-07 |  | 43.75d |
